# Construction schedule v1.0

Schedule from an IFC model, 2027-03-01 to 2027-12-17.
Stationsplein Car Park, Utrecht

## Schedule

| ID | Activity | Type | Duration | Start | Finish | Predecessors | Planned start | Planned finish | Total float | Free float |
| --- | --- | --- | --- | --- | --- | --- | --- | --- | --- | --- |
| 1 | **1. Preparation** |  | 24d | 2027-03-01 | 2027-04-05 |  | 2027-03-01 | 2027-03-05 | 0d |  |
| 1.1 | Divert cables and pipes |  | 10d | 2027-03-01 | 2027-03-12 |  |  |  | 0d |  |
| 1.2 | Set up site |  | 5d | 2027-03-15 | 2027-03-19 | 1.1 | 2027-03-01 | 2027-03-05 | 165d | 0d |
| 1.3 | Environmental monitoring |  | 3d | 2027-03-22 | 2027-03-24 | 1.2 | 2027-03-01 | 2027-03-03 | 165d | 0d |
| 1.4 | Traffic management |  | 5d | 2027-03-25 | 2027-04-02 | 1.3 | 2027-03-01 | 2027-03-05 | 165d | 0d |
| 1.5 | Start of construction | milestone | 0d | 2027-04-05 | 2027-04-05 | 1.4 | 2027-03-01 | 2027-03-01 | 165d |  |
| 2 | **2. Excavation pit** |  | 88d | 2027-03-17 | 2027-08-16 |  | 2027-03-01 | 2027-03-05 | 0d |  |
| 2.1 | Construct diaphragm walls |  | 20d | 2027-03-17 | 2027-04-15 | 1.1 SS+12d | 2027-03-01 | 2027-03-26 | 0d |  |
| 2.2 | Struts, level 1 |  | 8d | 2027-04-16 | 2027-04-28 | 2.1 | 2027-03-01 | 2027-03-10 | 89d | 0d |
| 2.3 | Excavate layer 1 |  | 10d | 2027-04-29 | 2027-05-14 | 2.2 | 2027-03-01 | 2027-03-12 | 89d | 0d |
| 2.4 | Struts, level 2 |  | 8d | 2027-05-18 | 2027-05-27 | 2.3 | 2027-03-01 | 2027-03-10 | 89d | 0d |
| 2.5 | Excavate layer 2 |  | 10d | 2027-05-28 | 2027-06-10 | 2.4 | 2027-03-01 | 2027-03-12 | 89d | 0d |
| 2.6 | Struts, level 3 |  | 8d | 2027-06-11 | 2027-06-22 | 2.5 | 2027-03-01 | 2027-03-10 | 89d | 0d |
| 2.7 | Excavate layer 3 |  | 10d | 2027-06-23 | 2027-07-06 | 2.6 | 2027-03-01 | 2027-03-12 | 89d | 0d |
| 2.8 | Underwater concrete slab |  | 8d | 2027-07-07 | 2027-07-16 | 2.7 | 2027-03-01 | 2027-03-10 | 89d | 0d |
| 2.9 | Pump dry |  | 5d | 2027-07-19 | 2027-07-23 | 2.8 | 2027-03-01 | 2027-03-05 | 89d | 0d |
| 2.10 | Excavation pit dry | milestone | 0d | 2027-08-16 | 2027-08-16 | 2.9 | 2027-03-01 | 2027-03-01 | 89d |  |
| 3 | **3. Concrete structure** |  | 84d | 2027-03-31 | 2027-08-20 |  | 2027-03-01 | 2027-03-05 | 0d |  |
| 3.1 | Slab at level -3 |  | 10d | 2027-03-31 | 2027-04-13 | 2.1 SS | 2027-03-01 | 2027-03-12 | 0d |  |
| 3.2 | Columns and walls, level -3 |  | 8d | 2027-04-14 | 2027-04-23 | 3.1 | 2027-03-01 | 2027-03-10 | 0d |  |
| 3.3 | Slab at level -2 |  | 10d | 2027-04-26 | 2027-05-12 | 3.2 | 2027-03-01 | 2027-03-12 | 0d |  |
| 3.4 | Columns and walls, level -2 |  | 8d | 2027-05-13 | 2027-05-25 | 3.3 | 2027-03-01 | 2027-03-10 | 0d |  |
| 3.5 | Slab at level -1 |  | 10d | 2027-05-26 | 2027-06-08 | 3.4 | 2027-03-01 | 2027-03-12 | 0d |  |
| 3.6 | Columns and walls, level -1 |  | 8d | 2027-06-09 | 2027-06-18 | 3.5 | 2027-03-01 | 2027-03-10 | 0d |  |
| 3.7 | Car park deck |  | 12d | 2027-06-21 | 2027-07-06 | 3.6 | 2027-03-01 | 2027-03-16 | 0d |  |
| 3.8 | Remove struts |  | 8d | 2027-07-07 | 2027-07-16 | 3.7 | 2027-03-01 | 2027-03-10 | 0d |  |
| 3.9 | Waterproofing |  | 10d | 2027-07-19 | 2027-08-20 | 3.8 | 2027-03-01 | 2027-03-12 | 0d |  |

| ID | Activity | Type | Duration | Start | Finish | Predecessors | Planned start | Planned finish | Total float |
| --- | --- | --- | --- | --- | --- | --- | --- | --- | --- |
| 4 | **4. Building services** |  | 58d | 2027-07-08 | 2027-10-18 |  | 2027-03-01 | 2027-03-05 | 0d |
| 4.1 | Main electrical distribution |  | 8d | 2027-07-08 | 2027-07-19 | 3.9 FS-17d | 2027-03-01 | 2027-03-10 | 0d |
| 4.2 | Lighting, parking levels |  | 10d | 2027-07-20 | 2027-08-23 | 4.1 | 2027-03-01 | 2027-03-12 | 0d |
| 4.3 | Ventilation and CO detection |  | 10d | 2027-08-24 | 2027-09-06 | 4.2 | 2027-03-01 | 2027-03-12 | 0d |
| 4.4 | Sprinkler installation |  | 8d | 2027-09-07 | 2027-09-16 | 4.3 | 2027-03-01 | 2027-03-10 | 0d |
| 4.5 | Parking guidance system |  | 5d | 2027-09-17 | 2027-09-23 | 4.4 | 2027-03-01 | 2027-03-05 | 0d |
| 4.6 | Lift installation |  | 12d | 2027-09-24 | 2027-10-11 | 4.5 | 2027-03-01 | 2027-03-16 | 0d |
| 4.7 | Fire alarm system |  | 5d | 2027-10-12 | 2027-10-18 | 4.6, 3.9 FF+2d | 2027-03-01 | 2027-03-05 | 0d |
| 5 | **5. Finishing** |  | 23d | 2027-10-19 | 2027-11-18 |  | 2027-03-01 | 2027-03-05 | 0d |
| 5.1 | Apply floor coating |  | 8d | 2027-10-19 | 2027-10-28 | 4.7 | 2027-03-01 | 2027-03-10 | 0d |
| 5.2 | Road marking and signage |  | 5d | 2027-10-29 | 2027-11-04 | 5.1 | 2027-03-01 | 2027-03-05 | 0d |
| 5.3 | Access control barriers |  | 5d | 2027-11-05 | 2027-11-11 | 5.2 | 2027-03-01 | 2027-03-05 | 0d |
| 5.4 | Finish emergency exits |  | 5d | 2027-11-12 | 2027-11-18 | 5.3 | 2027-03-01 | 2027-03-05 | 0d |
| 6 | **6. Surface reinstatement** |  | 21d | 2027-11-19 | 2027-12-17 |  | 2027-03-01 | 2027-03-05 | 0d |
| 6.1 | Redevelop the square |  | 10d | 2027-11-19 | 2027-12-02 | 5.4 | 2027-03-01 | 2027-03-12 | 0d |
| 6.2 | Paving and landscaping |  | 8d | 2027-12-03 | 2027-12-14 | 6.1 | 2027-03-01 | 2027-03-10 | 0d |
| 6.3 | Remove traffic management |  | 3d | 2027-12-15 | 2027-12-17 | 6.2 | 2027-03-01 | 2027-03-03 | 0d |
| 6.4 | Handover | milestone | 0d | 2027-12-17 | 2027-12-17 | 6.3 | 2027-03-01 | 2027-03-01 | 0d |
